# mem spinal cord project

Schedule from GanttProject, 2023-11-27 to 2024-09-12, baseline: rainy.
Holidays every year on 01-01, 01-02, 01-07, 02-15, 02-16, 05-01, 05-02, 11-11

## Calendars

- Project calendar: Mon-Fri working; Sat-Sun off.

## Schedule

| ID | WBS | Task | Type | Duration | Start | Finish | Predecessors | Complete | Baseline start | Baseline finish | Baseline duration | Baseline 1 start | Baseline 1 finish |
| --- | --- | --- | --- | --- | --- | --- | --- | --- | --- | --- | --- | --- | --- |
| 1 | 1 | **B-model develpment** |  | 53d | 2023-11-27 | 2024-02-09 |  | 4% | 2023-11-27 | 2024-02-09 | 53d | 2023-11-27 | 2024-02-09 |
| 2 | 1.1 | Ia STDP fix |  | 15d | 2023-11-27 | 2023-12-15 |  | 15% | 2023-11-27 | 2023-12-15 | 15d | 2023-11-27 | 2023-12-15 |
| 3 | 1.2 | Cut STDP fix |  | 7d | 2023-12-18 | 2023-12-26 | 2 |  | 2023-12-18 | 2023-12-26 | 7d | 2023-12-18 | 2023-12-26 |
| 4 | 1.3 | Ia->F, E STDP |  | 3d | 2023-12-27 | 2023-12-29 | 3 |  | 2023-12-27 | 2023-12-29 | 3d | 2023-12-27 | 2023-12-29 |
| 5 | 1.4 | BS->F, E STDP |  | 2d | 2024-01-03 | 2024-01-04 | 4 |  | 2024-01-03 | 2024-01-04 | 2d | 2024-01-03 | 2024-01-04 |
| 6 | 1.5 | Add 2nd leg |  | 2d | 2024-01-05 | 2024-01-08 | 3, 4, 5 |  | 2024-01-05 | 2024-01-08 | 2d | 2024-01-05 | 2024-01-08 |
| 7 | 1.6 | Commisural projections |  | 2d | 2024-01-09 | 2024-01-10 | 6 |  | 2024-01-09 | 2024-01-10 | 2d | 2024-01-09 | 2024-01-10 |
| 8 | 1.7 | Balance legs |  | 2d | 2024-01-11 | 2024-01-12 | 7 |  | 2024-01-11 | 2024-01-12 | 2d | 2024-01-11 | 2024-01-12 |
| 9 | 1.8 | Debug 2 legs |  | 10d | 2024-01-15 | 2024-01-26 | 8 |  | 2024-01-15 | 2024-01-26 | 10d | 2024-01-15 | 2024-01-26 |
| 10 | 1.9 | Debug STDP complete model |  | 10d | 2024-01-29 | 2024-02-09 | 9 |  | 2024-01-29 | 2024-02-09 | 10d | 2024-01-29 | 2024-02-09 |
| 11 | 1.10 | Complete B-model | milestone | 0d | 2024-02-12 | 2024-02-12 | 10 |  | 2024-02-12 | 2024-02-12 | 0d | 2024-02-12 | 2024-02-12 |
| 12 | 2 | **Memristors** |  | 80d | 2023-11-27 | 2024-03-21 |  |  | 2023-11-27 | 2024-03-21 | 80d | 2023-11-27 | 2024-03-21 |
| 13 | 2.1 | 1 memristor |  | 5d | 2023-11-27 | 2023-12-01 |  |  | 2023-11-27 | 2023-12-01 | 5d | 2023-11-27 | 2023-12-01 |
| 14 | 2.2 | 1 memristor test |  | 10d | 2023-12-04 | 2023-12-15 | 13 |  | 2023-12-04 | 2023-12-15 | 10d | 2023-12-04 | 2023-12-15 |
| 15 | 2.3 | 8 mem fubrication (E) |  | 10d | 2023-12-18 | 2023-12-29 | 14 |  | 2023-12-18 | 2023-12-29 | 10d | 2023-12-18 | 2023-12-29 |
| 16 | 2.4 | 8 mem test (E) |  | 10d | 2024-01-03 | 2024-01-16 | 15 |  | 2024-01-03 | 2024-01-16 | 10d | 2024-01-03 | 2024-01-16 |
| 17 | 2.5 | + 12 mem fubrication |  | 10d | 2024-01-17 | 2024-01-30 | 16 |  | 2024-01-17 | 2024-01-30 | 10d | 2024-01-17 | 2024-01-30 |
| 18 | 2.6 | 20 mem test (F+E) |  | 10d | 2024-01-31 | 2024-02-13 | 17 |  | 2024-01-31 | 2024-02-13 | 10d | 2024-01-31 | 2024-02-13 |
| 19 | 2.7 | 40 mems fubrication |  | 10d | 2024-02-14 | 2024-02-29 | 18 |  | 2024-02-14 | 2024-02-29 | 10d | 2024-02-14 | 2024-02-29 |
| 20 | 2.8 | 40 mems test |  | 15d | 2024-03-01 | 2024-03-21 | 19 |  | 2024-03-01 | 2024-03-21 | 15d | 2024-03-01 | 2024-03-21 |
| 21 | 2.9 | 40 mems (2 legs) | milestone | 0d | 2024-03-22 | 2024-03-22 | 20 |  | 2024-03-22 | 2024-03-22 | 0d | 2024-03-22 | 2024-03-22 |
| 22 | 3 | **Mem neurons** |  | 107d | 2023-11-27 | 2024-04-29 |  |  | 2023-11-27 | 2024-03-25 | 82d | 2023-11-27 | 2024-03-25 |
| 23 | 3.1 | negotiate parameters of mem neurons |  | 2d | 2023-11-27 | 2023-11-28 |  | 20% | 2023-11-27 | 2023-11-28 | 2d | 2023-11-27 | 2023-11-28 |
| 24 | 3.2 | Rework mem neuron sch |  | 10d | 2023-11-29 | 2023-12-12 | 23 |  | 2023-11-29 | 2023-12-12 | 10d | 2023-11-29 | 2023-12-12 |
| 25 | 3.3 | Design E neurons |  | 5d | 2023-12-13 | 2023-12-19 | 24 |  | 2023-12-13 | 2023-12-19 | 5d | 2023-12-13 | 2023-12-19 |
| 26 | 3.4 | Design F neurons |  | 5d | 2023-12-20 | 2023-12-26 | 25 |  | 2023-12-20 | 2023-12-26 | 5d | 2023-12-20 | 2023-12-26 |
| 27 | 3.5 | Design InE, InF |  | 5d | 2023-12-27 | 2024-01-04 | 26 |  | 2023-12-27 | 2024-01-04 | 5d | 2023-12-27 | 2024-01-04 |
| 28 | 3.6 | Design 2nd leg |  | 10d | 2024-01-05 | 2024-01-18 | 27 |  | 2024-01-05 | 2024-01-18 | 10d | 2024-01-05 | 2024-01-18 |
| 29 | 3.7 | Order 1st PCBs |  | 10d | 2024-01-19 | 2024-02-01 | 28 |  | 2024-01-19 | 2024-02-01 | 10d | 2024-01-19 | 2024-02-01 |
| 30 | 3.8 | Deliver PCBs |  | 15d | 2024-02-02 | 2024-02-26 | 29 |  | 2024-02-02 | 2024-02-26 | 15d | 2024-02-02 | 2024-02-26 |
| 31 | 3.9 | Assemble PCBs |  | 20d | 2024-02-27 | 2024-03-25 | 29, 30 |  | 2024-02-27 | 2024-03-25 | 20d | 2024-02-27 | 2024-03-25 |
| 32 | 3.10 | Redesign PCBs |  | 5d | 2024-03-26 | 2024-04-01 | 31 |  |  |  |  |  |  |
| 33 | 3.11 | Order 2nd PCBs |  | 10d | 2024-04-02 | 2024-04-15 | 32 |  |  |  |  |  |  |
| 34 | 3.12 | Assemble PCBs |  | 10d | 2024-04-16 | 2024-04-29 | 33 |  |  |  |  |  |  |
| 35 | 3.13 | Completed mem neurons | milestone | 0d | 2024-03-26 | 2024-03-26 | 31 |  | 2024-03-26 | 2024-03-26 | 0d | 2024-03-26 | 2024-03-26 |

| ID | WBS | Task | Type | Duration | Start | Finish | Predecessors | Baseline start | Baseline finish | Baseline duration | Baseline 1 start | Baseline 1 finish |
| --- | --- | --- | --- | --- | --- | --- | --- | --- | --- | --- | --- | --- |
| 36 | 4 | **Neurons+mems integration** |  | 62d | 2024-04-30 | 2024-07-26 | 1, 12, 22 | 2024-03-26 | 2024-06-21 | 62d | 2024-03-26 | 2024-06-21 |
| 37 | 4.1 | deliver mem neurons |  | 20d | 2024-04-30 | 2024-05-29 |  | 2024-03-26 | 2024-04-22 | 20d | 2024-03-26 | 2024-04-22 |
| 38 | 4.2 | integrate 1 neuron 1 mem |  | 5d | 2024-05-30 | 2024-06-05 | 37 | 2024-04-23 | 2024-04-29 | 5d | 2024-04-23 | 2024-04-29 |
| 39 | 4.3 | integrate 1 RG |  | 10d | 2024-06-06 | 2024-06-19 | 38 | 2024-04-30 | 2024-05-15 | 10d | 2024-04-30 | 2024-05-15 |
| 40 | 4.4 | test integrated RG |  | 7d | 2024-06-20 | 2024-06-28 | 39 | 2024-05-16 | 2024-05-24 | 7d | 2024-05-16 | 2024-05-24 |
| 41 | 4.5 | integrate 1 leg |  | 5d | 2024-07-01 | 2024-07-05 | 40 | 2024-05-27 | 2024-05-31 | 5d | 2024-05-27 | 2024-05-31 |
| 42 | 4.6 | test 1 leg |  | 5d | 2024-07-08 | 2024-07-12 | 41 | 2024-06-03 | 2024-06-07 | 5d | 2024-06-03 | 2024-06-07 |
| 43 | 4.7 | integrate 2 legs |  | 5d | 2024-07-15 | 2024-07-19 | 42 | 2024-06-10 | 2024-06-14 | 5d | 2024-06-10 | 2024-06-14 |
| 44 | 4.8 | test 2 legs |  | 5d | 2024-07-22 | 2024-07-26 | 43 | 2024-06-17 | 2024-06-21 | 5d | 2024-06-17 | 2024-06-21 |
| 45 | 4.9 | integrated 2 legs | milestone | 0d | 2024-07-29 | 2024-07-29 | 44 | 2024-06-24 | 2024-06-24 | 0d | 2024-06-24 | 2024-06-24 |
| 46 | 5 | **Rat validation** |  | 33d | 2024-07-29 | 2024-09-11 | 36 | 2024-06-24 | 2024-08-05 | 31d | 2024-06-24 | 2024-08-05 |
| 47 | 5.1 | deliver mem cpg |  | 20d | 2024-07-29 | 2024-08-23 |  | 2024-06-24 | 2024-07-19 | 20d | 2024-06-24 | 2024-07-19 |
| 48 | 5.2 | test mem cpg |  | 5d | 2024-08-26 | 2024-08-30 | 47 | 2024-07-22 | 2024-07-26 | 5d | 2024-07-22 | 2024-07-26 |
| 49 | 5.3 | integrate outs (F+E) |  | 3d | 2024-09-02 | 2024-09-04 | 48 | 2024-07-29 | 2024-07-31 | 3d | 2024-07-29 | 2024-07-31 |
| 50 | 5.4 | validate outs on rat |  | 5d | 2024-09-05 | 2024-09-11 | 49 | 2024-08-01 | 2024-08-05 | 3d | 2024-08-01 | 2024-08-05 |
| 51 | 5.5 | validated mem cpg | milestone | 0d | 2024-09-12 | 2024-09-12 | 50 | 2024-08-06 | 2024-08-06 | 0d | 2024-08-06 | 2024-08-06 |
